Schedule from MS Project, 2020-02-03 to 2020-09-22, 7 hours a day, costs in €, A marks actual dates.

## Calendars

- Standard: Mon-Thu 08:00-11:45, 13:00-17:00; Fri 08:00-12:00; Sat-Sun off. Exceptions (off unless hours are given): 2020-04-13 (Lundi de Pâques), 2020-05-01 (1er Mai), 2020-05-08 (Victoire de 1945), 2020-05-21 (Ascension), 2020-05-31 (Lundi de Pentecôte), 2020-07-14 (Fête nationale), 2020-08-15 (Assomption).

## Resources

| Resource | Group | Rate |
| --- | --- | --- |
| Charles DE PETRA | Chef de projet | 114.29 |
| Mathieu HIN | Maquettiste | 57.14 |
| Mounaa DHEU | Maquettiste | 57.14 |
| Dimitri OUANE | Développeur | 64.29 |
| Daniel THOUX | Développeur | 64.29 |
| Delphine TROUIE | Développeur | 64.29 |
| Dahlila FAURE | Développeur | 64.29 |
| Alice UNO | Architecte | 85.71 |
| Ange DOSSE | Architecte | 85.71 |
| Salle de réunion | Local | 100 |
| Salle de formation A | Local | 250 |
| Salle de formation B | Local | 250 |
| Services d'impression | Service | 5 |
| Fournitures de formation | Consommables | 2 |
| Repas de formation | Consommables | 7 |
| Lancement de projet | Forfait |  |
| Transfert de compétences | Forfait |  |

## Schedule

| ID | WBS | Task | Duration | Start | Finish | Predecessors | Complete | Remaining | Baseline start | Baseline finish | Baseline duration | Total slack | Free slack | Resources | Work | Actual work | Cost | Baseline cost | Actual cost |
| --- | --- | --- | --- | --- | --- | --- | --- | --- | --- | --- | --- | --- | --- | --- | --- | --- | --- | --- | --- |
| 1 | 1 | Analys des exigences | 8.32d | 2020-02-03 A | 2020-02-12 A |  | 100% |  | 2020-02-03 | 2020-02-14 | 10d |  |  | Charles DE PETRA; Lancement de projet [0.1%] | 58.25h | 58.25h | 8,457.14 | 9,800 | 6,657.14 |
| 2 | 2 | **Conception** | 19.18d | 2020-02-13 A | 2020-03-11 |  |  | 19.18d | 2020-02-17 | 2020-03-06 | 15d | 0d |  |  | 210h |  | 12,500 | 12,500 |  |
| 3 | 2.1 | **Maquettage** | 12.5d | 2020-02-13 | 2020-03-02 |  |  |  | 2020-02-17 | 2020-03-04 | 12.5d | 4.18d |  |  | 140h |  | 8,000 | 8,000 |  |
| 4 | 2.1.1 | Charte graphique | 5d | 2020-02-20 | 2020-02-26 | 1 |  |  | 2020-02-17 | 2020-02-21 | 5d | 4.18d | 0d | Mathieu HIN | 35h |  | 2,000 | 2,000 |  |
| 5 | 2.1.2 | Philosophie des IHM | 10d | 2020-02-13 | 2020-02-26 | 1 |  |  | 2020-02-17 | 2020-02-28 | 10d | 4.18d | 0d | Mounaa DHEU | 70h |  | 4,000 | 4,000 |  |
| 6 | 2.1.3 | Conception des maquettes | 2.5d | 2020-02-27 | 2020-03-02 | 5, 4 |  |  | 2020-03-02 | 2020-03-04 | 2.5d | 4.18d |  | Mathieu HIN; Mounaa DHEU | 35h |  | 2,000 | 2,000 |  |
| 7 | 2.2 | Documentation | 2.5d | 2020-03-09 A | 2020-03-11 | 6 |  | 2.5d | 2020-03-04 | 2020-03-06 | 2.5d | 0d |  | Dimitri OUANE; Daniel THOUX; Delphine TROUIE; Dahlila FAURE | 70h |  | 4,500 | 4,500 |  |
| 8 | 3 | **Validation des charges** | 10d | 2020-03-11 | 2020-03-25 |  |  |  | 2020-03-09 | 2020-03-20 | 10d | 0d |  |  | 80h |  | 8,842.86 | 8,842.86 |  |
| 9 | 3.1 | Détermination des jeux d'essai | 5d | 2020-03-11 | 2020-03-18 | 2 |  |  | 2020-03-09 | 2020-03-13 | 5d | 0d |  | Charles DE PETRA; Salle de réunion | 35h |  | 4,100 | 4,100 |  |
| 10 | 3.2 | Priorisation des fonctionnalités | 5d | 2020-03-18 | 2020-03-25 | 9 |  |  | 2020-03-16 | 2020-03-20 | 5d | 0d |  | Charles DE PETRA; Dimitri OUANE [29%]; Salle de réunion | 45h |  | 4,742.86 | 4,742.86 |  |
| 11 | 4 | **Conception de l'architecture technique** | 30d | 2020-03-25 | 2020-05-07 |  |  |  | 2020-03-23 | 2020-05-05 | 30d | 0d |  |  | 385h |  | 33,000 | 33,000 |  |
| 12 | 4.1 | Géolocalisation des applications | 15d | 2020-03-25 | 2020-04-16 | 8 |  |  | 2020-03-23 | 2020-04-10 | 15d | 0d |  | Alice UNO; Ange DOSSE | 210h |  | 18,000 | 18,000 |  |
| 13 | 4.2 | Estimation des volumes échangés | 10d | 2020-04-16 | 2020-04-30 | 12 |  |  | 2020-04-14 | 2020-04-27 | 10d | 5d |  | Alice UNO | 70h |  | 6,000 | 6,000 |  |
| 14 | 4.3 | Estimation de la fréquentation | 15d | 2020-04-16 | 2020-05-07 | 12 |  |  | 2020-04-14 | 2020-05-05 | 15d | 0d |  | Ange DOSSE | 105h |  | 9,000 | 9,000 |  |
| 15 | 5 | **Développement** | 55d | 2020-05-07 | 2020-07-28 |  |  |  | 2020-05-05 | 2020-07-24 | 55d | 0d |  |  | 1295h |  | 87,214.29 | 87,214.29 |  |
| 16 | 5.1 | Application web publique | 45d | 2020-05-07 | 2020-07-13 | 11 |  |  | 2020-05-05 | 2020-07-09 | 45d | 0d |  | Dimitri OUANE; Dahlila FAURE | 630h |  | 40,500 | 40,500 |  |
| 17 | 5.2 | **Application mobile** | 25d | 2020-05-07 | 2020-06-15 |  |  |  | 2020-05-05 | 2020-06-11 | 25d | 20d |  |  | 350h |  | 22,500 | 22,500 |  |
| 18 | 5.2.1 | Privée | 15d | 2020-05-07 | 2020-06-01 | 16SS |  |  | 2020-05-05 | 2020-05-28 | 15d | 20d | 0d | Daniel THOUX; Delphine TROUIE | 210h |  | 13,500 | 13,500 |  |
| 19 | 5.2.2 | Publique | 10d | 2020-06-01 | 2020-06-15 | 18 |  |  | 2020-05-28 | 2020-06-11 | 10d | 20d |  | Daniel THOUX; Delphine TROUIE | 140h |  | 9,000 | 9,000 |  |
| 20 | 5.3 | Gestion de la sécurité | 25d | 2020-06-08 | 2020-07-13 | 16FF, 18FF, 19FF |  |  | 2020-06-04 | 2020-07-09 | 25d | 0d |  | Alice UNO [71.4%]; Dahlila FAURE [14.3%]; Dimitri OUANE [14%] | 175h |  | 15,214.29 | 15,214.29 |  |
| 21 | 5.4 | Tests unitaires | 5d | 2020-07-13 | 2020-07-21 | 20 |  |  | 2020-07-09 | 2020-07-17 | 5d | 0d |  | Daniel THOUX; Delphine TROUIE | 70h |  | 4,500 | 4,500 |  |
| 22 | 5.5 | Tests d'intégration | 5d | 2020-07-21 | 2020-07-28 | 21 |  |  | 2020-07-17 | 2020-07-24 | 5d | 0d |  | Daniel THOUX; Delphine TROUIE | 70h |  | 4,500 | 4,500 |  |
| 23 | 6 | Formation des utilisateurs | 10d | 2020-07-28 | 2020-08-11 | 15 |  |  | 2020-07-24 | 2020-08-07 | 10d | 30d |  | Dahlila FAURE; Dimitri OUANE; Mathieu HIN; Mounaa DHEU; Fournitures de formation [428.6%]; Repas de formation [500%]; Salle de formation A; Salle de formation B; Services d'impression [428.6%] | 280h |  | 22,050 | 22,050 |  |
| 24 | 7 | **Déploiement** | 40d | 2020-07-28 | 2020-09-22 | 21 |  |  | 2020-07-24 | 2020-09-18 | 40d | 0d |  |  | 980h |  | 64,350 | 64,350 |  |
| 25 | 7.1 | Site pilote | 10d | 2020-07-28 | 2020-08-11 | 15 |  |  | 2020-07-24 | 2020-08-07 | 10d | 0d |  | Daniel THOUX; Delphine TROUIE | 140h |  | 9,000 | 9,000 |  |
| 26 | 7.2 | Généralisation | 30d | 2020-08-11 | 2020-09-22 | 25 |  |  | 2020-08-07 | 2020-09-18 | 30d | 0d |  | Dahlila FAURE; Daniel THOUX; Delphine TROUIE; Dimitri OUANE; Transfert de compétences [0.1%] | 840h |  | 55,350 | 55,350 |  |
